# Business Name Generator

How a schedule from MS Project changed from version to version. A marks actual dates.

## Version 1 (saved 2013-04-09, file D10126532InitialPlan.mpp)

Note of the change: Completed a couple of simulations for part 2

| ID | WBS | Task | Duration | Start | Finish | Predecessors | Total float | Constraint |
| --- | --- | --- | --- | --- | --- | --- | --- | --- |
| 1 |  | Order kit & schedule delivery | 1d | 2013-07-04 | 2013-07-04 |  | 4d |  |
| 2 | 2 | **Preparation** | 7.6d | 2013-07-04 | 2013-07-15 | 1SS | 0d |  |
| 3 |  | Site preparation | 2d | 2013-07-04 | 2013-07-05 |  | 4d |  |
| 4 |  | Pour the foundation | 1.6d | 2013-07-12 | 2013-07-15 | 3 | 0d | start no earlier than 2013-07-12 |
| 5 |  | Receive the delivery | 1d | 2013-07-18 | 2013-07-19 | 2FS+3d | 0d |  |
| 6 |  | Delivery milestone | 0d | 2013-07-19 | 2013-07-19 | 5 | 6d |  |
| 7 | 5 | **Assembly** | 7d | 2013-07-18 | 2013-07-29 | 5SS | 0d |  |
| 8 |  | Assemble kit | 2d | 2013-07-18 | 2013-07-22 |  | 0d |  |
| 9 |  | Stain the shed | 1d | 2013-07-25 | 2013-07-26 | 8FS+3d | 0d |  |
| 10 |  | Plant landscaping | 1d | 2013-07-26 | 2013-07-29 | 9 | 0d |  |
| 11 |  | Fill the shed | 1d | 2013-07-25 | 2013-07-26 | 9SS | 1d |  |

## Version 2 (saved 2013-04-20, file D10126532InitialPlan.mpp)

Note of the change: More updates

Last finish 2013-07-29 → 2013-07-01 (-28d).

Added:

| ID | Task | Duration | Start | Finish |
| --- | --- | --- | --- | --- |
| 4 | Project Review Lessons Learned | 1d? | 2013-07-01 | 2013-07-01 |
| 13 | On-line How To Use video production | 1d? | 2013-07-01 | 2013-07-01 |
| 14 | **Technical Implementation** | 1d? | 2013-07-01 | 2013-07-01 |
| 15 | **Sprint 1** | 1d? | 2013-07-01 | 2013-07-01 |
| 16 | Sprint Plan | 1d? | 2013-07-01 | 2013-07-01 |
| 17 | Implement Architecture Framework | 1d? | 2013-07-01 | 2013-07-01 |
| 18 | Code Database Schema & Initial data | 1d? | 2013-07-01 | 2013-07-01 |
| 19 | Integrate Oauth for Authentication | 1d? | 2013-07-01 | 2013-07-01 |
| 20 | Login page & dummy landing page with basic user info | 1d? | 2013-07-01 | 2013-07-01 |
| 21 | Develop automated test for sprint | 1d? | 2013-07-01 | 2013-07-01 |
| 22 | Develop Deployment Script for test Environment | 1d? | 2013-07-01 | 2013-07-01 |
| 23 | Release Sprint | 0d | 2013-07-01 | 2013-07-01 |
| 24 | Sprint Review & Improve Process | 1d? | 2013-07-01 | 2013-07-01 |
| 25 | **Sprint 2** | 1d? | 2013-07-01 | 2013-07-01 |
| 26 | Sprint Plan | 1d? | 2013-07-01 | 2013-07-01 |
| 27 | Implement Thesaurus Service Plugin | 1d? | 2013-07-01 | 2013-07-01 |
| 28 | Code Main HTML5/jQuery page | 1d? | 2013-07-01 | 2013-07-01 |
| 29 | Integrate Thesaurus Data with HTML/jQuery | 1d? | 2013-07-01 | 2013-07-01 |
| 30 | Bug Fixes from previous sprint | 1d? | 2013-07-01 | 2013-07-01 |
| 31 | Develop automated test for sprint | 1d? | 2013-07-01 | 2013-07-01 |
| 32 | Release Sprint | 0d | 2013-07-01 | 2013-07-01 |
| 33 | Sprint Review & Improve Process | 1d? | 2013-07-01 | 2013-07-01 |
| 34 | **Sprint 3** | 1d? | 2013-07-01 | 2013-07-01 |
| 35 | Sprint Plan | 1d? | 2013-07-01 | 2013-07-01 |
| 36 | Integrate SEO Ad Campaign Framework | 1d? | 2013-07-01 | 2013-07-01 |
| 37 | Code Domain Name Availabity Module | 1d? | 2013-07-01 | 2013-07-01 |
| 38 | Bug Fixes from previous sprint | 1d? | 2013-07-01 | 2013-07-01 |
| 39 | Develop automated test for sprint | 1d? | 2013-07-01 | 2013-07-01 |
| 40 | Release Sprint | 0d | 2013-07-01 | 2013-07-01 |
| 41 | Sprint Review & Improve Process | 1d? | 2013-07-01 | 2013-07-01 |
| 42 | **Sprint 4** | 1d? | 2013-07-01 | 2013-07-01 |
| 43 | Sprint Plan | 1d? | 2013-07-01 | 2013-07-01 |
| 44 | Code Social Real Estate Availability Module | 1d? | 2013-07-01 | 2013-07-01 |
| 45 | Develop automated test for sprint | 1d? | 2013-07-01 | 2013-07-01 |
| 46 | Bug Fixes from previous sprint | 1d? | 2013-07-01 | 2013-07-01 |
| 47 | Release Sprint | 0d | 2013-07-01 | 2013-07-01 |
| 48 | Sprint Review & Improve Process | 1d? | 2013-07-01 | 2013-07-01 |
| 49 | **Sprint 5** | 1d? | 2013-07-01 | 2013-07-01 |
| 50 | Sprint Plan | 1d? | 2013-07-01 | 2013-07-01 |
| 51 | TODO: | 1d? | 2013-07-01 | 2013-07-01 |
| 52 | Bug Fixes from previous sprint | 1d? | 2013-07-01 | 2013-07-01 |
| 53 | Develop automated test for sprint | 1d? | 2013-07-01 | 2013-07-01 |
| 54 | Release Sprint | 0d | 2013-07-01 | 2013-07-01 |
| 55 | Sprint Review & Improve Process | 1d? | 2013-07-01 | 2013-07-01 |
| 56 | **Sprint X** | 1d? | 2013-07-01 | 2013-07-01 |
| 57 | Sprint Plan | 1d? | 2013-07-01 | 2013-07-01 |
| 58 | Bug Fixes from previous sprint | 1d? | 2013-07-01 | 2013-07-01 |
| 59 | Test scale-out (stress test) | 1d? | 2013-07-01 | 2013-07-01 |
| 60 | Bug Fixing from scale-out testing | 1d? | 2013-07-01 | 2013-07-01 |
| 61 | Release Sprint | 0d | 2013-07-01 | 2013-07-01 |
| 62 | Sprint Review & Improve Process | 1d? | 2013-07-01 | 2013-07-01 |
| 63 | Release to Market (Go Live) | 1d? | 2013-07-01 | 2013-07-01 |
| 64 | **Sprint Y** | 1d? | 2013-07-01 | 2013-07-01 |
| 65 | Sprint Plan | 1d? | 2013-07-01 | 2013-07-01 |
| 66 | Post Live Bug Fixing | 1d? | 2013-07-01 | 2013-07-01 |
| 67 | Release Sprint | 0d | 2013-07-01 | 2013-07-01 |
| 68 | Sprint Review & Improve Process | 1d? | 2013-07-01 | 2013-07-01 |
| 69 | **Support & Maintenance** | 1d? | 2013-07-01 | 2013-07-01 |
| 70 | Website monitoring | 1d? | 2013-07-01 | 2013-07-01 |
| 71 | Bug fixing | 1d? | 2013-07-01 | 2013-07-01 |
| 72 | Release | 0d | 2013-07-01 | 2013-07-01 |
| 73 | Project Close | 0d | 2013-07-01 | 2013-07-01 |

Changed:

| ID | Task | Start | Finish | Duration | Total float | Predecessors | Other |
| --- | --- | --- | --- | --- | --- | --- | --- |
| 1 | **Project Planning** | 2013-07-04 → 2013-07-01 (-3d) | 2013-07-04 → 2013-07-01 (-3d) | 1d → 1d? | 4d → 0d |  | was named Order kit & schedule delivery; resources John Doe [25%] → none |
| 2 | Project Charter Document | 2013-07-04 → 2013-07-01 (-3d) | 2013-07-15 → 2013-07-01 (-14d) | 7.6d → 1d? |  | 1SS → none | was named Preparation |
| 3 | Project Management Plan | 2013-07-04 → 2013-07-01 (-3d) | 2013-07-05 → 2013-07-01 (-4d) | 2d → 1d? | 4d → 0d |  | was named Site preparation; resources Betty Doe [75%]; Frank Doe [75%]; John Doe [75%] → none |
| 5 | **Technical Product Design** | 2013-07-12 → 2013-07-01 (-11d) | 2013-07-15 → 2013-07-01 (-14d) | 1.6d → 1d? |  | 3 → none | was named Pour the foundation; constraint start no earlier than 2013-07-12 → none; resources Andy Handy [62.5%]; John Doe [62.5%] → none |
| 6 | Software Architecture Design | 2013-07-18 → 2013-07-01 (-17d) | 2013-07-19 → 2013-07-01 (-18d) | 1d → 1d? |  | 2FS+3d → none | was named Receive the delivery; resources John Doe [25%] → none |
| 7 | Cloud Infrastructure Design | 2013-07-19 → 2013-07-01 (-18d) | 2013-07-19 → 2013-07-01 (-18d) | 0d → 1d? | 6d → 0d | 6 → none | was named Delivery milestone |
| 8 | Test Plan Design | 2013-07-18 → 2013-07-01 (-17d) | 2013-07-29 → 2013-07-01 (-28d) | 7d → 1d? |  | 6SS → none | was named Assembly |
| 9 | User Interface Design | 2013-07-18 → 2013-07-01 (-17d) | 2013-07-22 → 2013-07-01 (-21d) | 2d → 1d? |  |  | was named Assemble kit; resources Andy Handy [63%]; John Doe [63%] → none |
| 10 | **Marketing Product Design** | 2013-07-25 → 2013-07-01 (-24d) | 2013-07-26 → 2013-07-01 (-25d) | 1d → 1d? |  | 9FS+3d → none | was named Stain the shed; resources Betty Doe [25%]; Frank Doe [25%] → none |
| 11 | Search Engine Optimisation Design | 2013-07-26 → 2013-07-01 (-25d) | 2013-07-29 → 2013-07-01 (-28d) | 1d → 1d? |  | 10 → none | was named Plant landscaping; resources Betty Doe [25%] → none |
| 12 | Product Marketing | 2013-07-25 → 2013-07-01 (-24d) | 2013-07-26 → 2013-07-01 (-25d) | 1d → 1d? | 1d → 0d | 10SS → none | was named Fill the shed |

## Version 3 (saved 2013-04-21, file D10126532InitialPlan.mpp)

Note of the change: last updates of the day

Last finish 2013-07-01 → 2013-10-23 (+114d).

Added:

| ID | Task | Duration | Start | Finish | Predecessors | Resources |
| --- | --- | --- | --- | --- | --- | --- |
| 6 | Requirements Gathering | 3d | 2013-07-01 | 2013-07-03 |  | Gary Dolan; John Warde [33.3%] |
| 27 | iOS App: Login Page + Thesaurus Integration | 4d | 2013-07-19 | 2013-07-25 | 23 | Carmel Keegan |
| 29 | Develop deployment script for production | 3d | 2013-07-19 | 2013-07-24 | 23 | Fergal Browne; CSP Production Account |
| 37 | iOS App: Integration with SEO, Domain Name availability | 3d | 2013-07-30 | 2013-08-02 | 36SS+1d | Carmel Keegan |
| 45 | iOS App: Social Real Estate Integration | 2d | 2013-08-08 | 2013-08-09 | 43SS+1d | Carmel Keegan |
| 55 | iOS App: Final Integration and bug fixing | 2d | 2013-08-15 | 2013-08-19 | 51 | Carmel Keegan |
| 67 | iOS Bug Fixing & Releases | 40d | 2013-08-29 | 2013-10-23 | 63 | Carmel Keegan [30%] |

Removed: 10 Marketing Product Design; 11 Search Engine Optimisation Design; 12 Product Marketing; 13 On-line How To Use video production; 50 Sprint Plan; 51 TODO:; 52 Bug Fixes from previous sprint; 53 Develop automated test for sprint; 54 Release Sprint; 55 Sprint Review & Improve Process; 56 Sprint X; 72 Release

Changed:

| ID | Task | Start | Finish | Duration | Total float | Predecessors | Other |
| --- | --- | --- | --- | --- | --- | --- | --- |
| 1 | **Project Planning** |  | 2013-07-01 → 2013-08-29 (+59d) | 1d? → 44d | 0d → 39d |  |  |
| 2 | Project Charter Document |  | 2013-07-01 → 2013-07-02 (+1d) | 1d? → 2d | 0d → 78d |  | resources none → John Warde [50%] |
| 3 | Project Management Plan | 2013-07-01 → 2013-07-03 (+2d) | 2013-07-01 → 2013-07-05 (+4d) | 1d? → 3d | 0d → 78d | none → 2 | resources none → John Warde [33.3%] |
| 4 | Project Review, Lessons Learned | 2013-07-01 → 2013-08-29 (+59d) | 2013-07-01 → 2013-08-29 (+59d) | 1d? → 1d | 0d → 39d | none → 63 | was named Project Review Lessons Learned; resources none → John Warde [50%]; Gary Dolan [50%] |
| 5 | **Technical Product Design** |  | 2013-07-01 → 2013-07-10 (+9d) | 1d? → 8d |  |  |  |
| 7 | Software Architecture Design | 2013-07-01 → 2013-07-04 (+3d) | 2013-07-01 → 2013-07-10 (+9d) | 1d? → 5d |  | none → 6 | resources none → Gary Dolan; Michael McMorrow |
| 8 | Cloud Infrastructure Design | 2013-07-01 → 2013-07-04 (+3d) | 2013-07-01 → 2013-07-10 (+9d) | 1d? → 5d | 0d → 75d | none → 6 | resources none → Fergal Browne |
| 9 | Test Plan Design | 2013-07-01 → 2013-07-04 (+3d) | 2013-07-01 → 2013-07-09 (+8d) | 1d? → 4d | 0d → 76d | none → 6 | resources none → Elaine McLaughlin |
| 10 | User Interface Design | 2013-07-01 → 2013-07-04 (+3d) | 2013-07-01 → 2013-07-08 (+7d) | 1d? → 3d | 0d → 77d | none → 6 | resources none → Nadia Moloney; John Warde [17%] |
| 11 | **Technical Implementation** | 2013-07-01 → 2013-07-11 (+10d) | 2013-07-01 → 2013-08-28 (+58d) | 1d? → 35d |  |  |  |
| 12 | **Sprint 1** | 2013-07-01 → 2013-07-11 (+10d) | 2013-07-01 → 2013-07-18 (+17d) | 1d? → 6d |  |  |  |
| 13 | Sprint Plan | 2013-07-01 → 2013-07-11 (+10d) | 2013-07-01 → 2013-07-11 (+10d) | 1d? → 0.5d |  | none → 7 | resources none → John Warde; Gary Dolan |
| 14 | Implement Architecture Framework | 2013-07-01 → 2013-07-11 (+10d) | 2013-07-01 → 2013-07-18 (+17d) | 1d? → 5d |  | none → 13 | resources none → Gary Dolan |
| 15 | Code Database Schema & Initial data | 2013-07-01 → 2013-07-11 (+10d) | 2013-07-01 → 2013-07-15 (+14d) | 1d? → 2d | 0d → 69.5d | none → 13 | resources none → Michael McMorrow |
| 16 | Integrate OAuth for Authentication | 2013-07-01 → 2013-07-15 (+14d) | 2013-07-01 → 2013-07-17 (+16d) | 1d? → 2d | 0d → 69.5d | none → 15 | was named Integrate Oauth for Authentication; resources none → Michael McMorrow; CSP Test Account [16%] |
| 17 | Login page & dummy landing page with basic user info | 2013-07-01 → 2013-07-17 (+16d) | 2013-07-01 → 2013-07-18 (+17d) | 1d? → 1d | 0d → 69.5d | none → 16 | resources none → Michael McMorrow; CSP Test Account [75%] |
| 18 | Develop automated tests for sprint | 2013-07-01 → 2013-07-11 (+10d) | 2013-07-01 → 2013-07-15 (+14d) | 1d? → 2d | 0d → 72.5d | none → 13 | was named Develop automated test for sprint; resources none → Elaine McLaughlin |
| 19 | Develop Deployment Script for test Environment | 2013-07-01 → 2013-07-11 (+10d) | 2013-07-01 → 2013-07-15 (+14d) | 1d? → 2d | 0d → 71.5d | none → 13 | resources none → Fergal Browne; CSP Test Account [50%] |
| 20 | Release Sprint | 2013-07-01 → 2013-07-18 (+17d) | 2013-07-01 → 2013-07-18 (+17d) |  | 1d → 0d | none → 14 |  |
| 21 | Sprint Review & Improve Process | 2013-07-01 → 2013-07-18 (+17d) | 2013-07-01 → 2013-07-18 (+17d) | 1d? → 0.5d |  | none → 20 | resources none → Gary Dolan [60%]; Michael McMorrow [60%]; Fergal Browne [60%]; Carmel Keegan [60%]; Elaine McLaughlin [60%] |
| 22 | **Sprint 2** | 2013-07-01 → 2013-07-19 (+18d) | 2013-07-01 → 2013-07-26 (+25d) | 1d? → 6d |  |  |  |
| 23 | Sprint Plan | 2013-07-01 → 2013-07-19 (+18d) | 2013-07-01 → 2013-07-19 (+18d) | 1d? → 0.5d |  | none → 21 | resources none → John Warde; Gary Dolan |
| 24 | Implement Thesaurus Service Plugin | 2013-07-01 → 2013-07-19 (+18d) | 2013-07-01 → 2013-07-24 (+23d) | 1d? → 3d |  | none → 23 | resources none → Gary Dolan |
| 25 | Code Main HTML5/jQuery page | 2013-07-01 → 2013-07-19 (+18d) | 2013-07-01 → 2013-07-23 (+22d) | 1d? → 2d | 0d → 0.5d | none → 23 | resources none → Michael McMorrow; CSP Test Account [50%] |
| 26 | Integrate Thesaurus Data with HTML/jQuery | 2013-07-01 → 2013-07-24 (+23d) | 2013-07-01 → 2013-07-25 (+24d) | 1d? → 1d |  | none → 24 | resources none → Gary Dolan |
| 28 | Bug Fixes from previous sprint | 2013-07-01 → 2013-07-25 (+24d) | 2013-07-01 → 2013-07-26 (+25d) | 1d? → 1d |  | none → 25, 26 | resources none → Gary Dolan; Michael McMorrow |
| 30 | Develop automated test for sprint | 2013-07-01 → 2013-07-19 (+18d) | 2013-07-01 → 2013-07-24 (+23d) | 1d? → 3d | 0d → 65.5d | none → 23 | resources none → Elaine McLaughlin |
| 31 | Release Sprint | 2013-07-01 → 2013-07-26 (+25d) | 2013-07-01 → 2013-07-26 (+25d) |  | 1d → 0d | none → 28 |  |
| 32 | Sprint Review & Improve Process | 2013-07-01 → 2013-07-26 (+25d) | 2013-07-01 → 2013-07-26 (+25d) | 1d? → 0.5d |  | none → 31 | resources none → Gary Dolan [60%]; Michael McMorrow [60%]; Fergal Browne [60%]; Carmel Keegan [60%]; Elaine McLaughlin [60%] |
| 33 | **Sprint 3** | 2013-07-01 → 2013-07-29 (+28d) | 2013-07-01 → 2013-08-06 (+36d) | 1d? → 7d |  |  |  |
| 34 | Sprint Plan | 2013-07-01 → 2013-07-29 (+28d) | 2013-07-01 → 2013-07-29 (+28d) | 1d? → 0.5d |  | none → 32 | resources none → John Warde; Gary Dolan |
| 35 | Integrate SEO Ad Campaign Framework | 2013-07-01 → 2013-07-29 (+28d) | 2013-07-01 → 2013-07-30 (+29d) | 1d? → 1d | 0d → 61.5d | none → 34 | resources none → Michael McMorrow |
| 36 | Code Domain Name Availabity Module | 2013-07-01 → 2013-07-29 (+28d) | 2013-07-01 → 2013-08-02 (+32d) | 1d? → 4d |  | none → 34 | resources none → Gary Dolan |
| 38 | Bug Fixes from previous sprint | 2013-07-01 → 2013-08-02 (+32d) | 2013-07-01 → 2013-08-06 (+36d) | 1d? → 2d |  | none → 36 | resources none → Michael McMorrow |
| 39 | Develop automated test for sprint | 2013-07-01 → 2013-07-29 (+28d) | 2013-07-01 → 2013-07-31 (+30d) | 1d? → 2d | 0d → 60.5d | none → 34 | resources none → Elaine McLaughlin |
| 40 | Release Sprint | 2013-07-01 → 2013-08-06 (+36d) | 2013-07-01 → 2013-08-06 (+36d) |  | 1d → 0d | none → 38 |  |
| 41 | Sprint Review & Improve Process | 2013-07-01 → 2013-08-06 (+36d) | 2013-07-01 → 2013-08-06 (+36d) | 1d? → 0.5d |  | none → 40 | resources none → Gary Dolan [60%]; Michael McMorrow [60%]; Fergal Browne [60%]; Carmel Keegan [60%]; Elaine McLaughlin [60%] |
| 42 | **Sprint 4** | 2013-07-01 → 2013-08-07 (+37d) | 2013-07-01 → 2013-08-14 (+44d) | 1d? → 6d |  |  |  |
| 43 | Sprint Plan | 2013-07-01 → 2013-08-07 (+37d) | 2013-07-01 → 2013-08-07 (+37d) | 1d? → 0.5d |  | none → 41 | resources none → John Warde; Gary Dolan |
| 44 | Code Social Real Estate Availability Module | 2013-07-01 → 2013-08-07 (+37d) | 2013-07-01 → 2013-08-12 (+42d) | 1d? → 3d |  | none → 43 | resources none → Gary Dolan; Michael McMorrow |
| 46 | Develop automated test for sprint | 2013-07-01 → 2013-08-07 (+37d) | 2013-07-01 → 2013-08-09 (+39d) | 1d? → 2d | 0d → 53.5d | none → 43 | resources none → Elaine McLaughlin |
| 47 | Bug Fixes from previous sprint | 2013-07-01 → 2013-08-12 (+42d) | 2013-07-01 → 2013-08-14 (+44d) | 1d? → 2d |  | none → 44 | resources none → Michael McMorrow |
| 48 | Release Sprint | 2013-07-01 → 2013-08-14 (+44d) | 2013-07-01 → 2013-08-14 (+44d) |  | 1d → 0d | none → 47 |  |
| 49 | Sprint Review & Improve Process | 2013-07-01 → 2013-08-14 (+44d) | 2013-07-01 → 2013-08-14 (+44d) | 1d? → 0.5d |  | none → 48 | resources none → Gary Dolan [60%]; Michael McMorrow [60%]; Fergal Browne [60%]; Carmel Keegan [60%]; Elaine McLaughlin [60%] |
| 50 | **Sprint 5** | 2013-07-01 → 2013-08-15 (+45d) | 2013-07-01 → 2013-08-21 (+51d) | 1d? → 5d |  |  |  |
| 51 | Sprint Plan | 2013-07-01 → 2013-08-15 (+45d) | 2013-07-01 → 2013-08-15 (+45d) | 1d? → 0.5d |  | none → 49 | resources none → John Warde; Gary Dolan |
| 52 | Bug Fixes from previous sprint | 2013-07-01 → 2013-08-15 (+45d) | 2013-07-01 → 2013-08-19 (+49d) | 1d? → 2d | 0d → 47.5d | none → 51 | resources none → Gary Dolan; Michael McMorrow |
| 53 | Test scale-out (stress test) | 2013-07-01 → 2013-08-15 (+45d) | 2013-07-01 → 2013-08-19 (+49d) | 1d? → 2d |  | none → 51 | resources none → Fergal Browne; Elaine McLaughlin; Gary Dolan; Michael McMorrow |
| 54 | Bug Fixing from scale-out testing | 2013-07-01 → 2013-08-19 (+49d) | 2013-07-01 → 2013-08-21 (+51d) | 1d? → 2d |  | none → 53 | resources none → Gary Dolan; Michael McMorrow |
| 56 | Release Sprint | 2013-07-01 → 2013-08-21 (+51d) | 2013-07-01 → 2013-08-21 (+51d) |  | 1d → 0d | none → 54 |  |
| 57 | Sprint Review & Improve Process | 2013-07-01 → 2013-08-21 (+51d) | 2013-07-01 → 2013-08-21 (+51d) | 1d? → 0.5d |  | none → 56 | resources none → Gary Dolan [60%]; Michael McMorrow [60%]; Fergal Browne [60%]; Carmel Keegan [60%]; Elaine McLaughlin [60%] |
| 58 | Release to Market (Go Live) | 2013-07-01 → 2013-08-21 (+51d) | 2013-07-01 → 2013-08-21 (+51d) | 1d? → 0d |  | none → 57 |  |
| 59 | **Sprint 6** | 2013-07-01 → 2013-08-22 (+52d) | 2013-07-01 → 2013-08-28 (+58d) | 1d? → 5d |  |  | was named Sprint Y |
| 60 | Sprint Plan | 2013-07-01 → 2013-08-22 (+52d) | 2013-07-01 → 2013-08-22 (+52d) | 1d? → 0.5d |  | none → 58 | resources none → John Warde; Gary Dolan |
| 61 | Post Live Bug Fixing | 2013-07-01 → 2013-08-22 (+52d) | 2013-07-01 → 2013-08-28 (+58d) | 1d? → 4d |  | none → 60 | resources none → Gary Dolan; Michael McMorrow; Carmel Keegan |
| 62 | Release Sprint | 2013-07-01 → 2013-08-28 (+58d) | 2013-07-01 → 2013-08-28 (+58d) |  | 1d → 0d | none → 61 |  |
| 63 | Sprint Review & Improve Process | 2013-07-01 → 2013-08-28 (+58d) | 2013-07-01 → 2013-08-28 (+58d) | 1d? → 0.5d |  | none → 62 | resources none → Gary Dolan [60%]; Michael McMorrow [60%]; Fergal Browne [60%]; Carmel Keegan [60%]; Elaine McLaughlin [60%] |
| 64 | **On going Support & Maintenance** | 2013-07-01 → 2013-08-29 (+59d) | 2013-07-01 → 2013-10-23 (+114d) | 1d? → 40d |  |  | was named Support & Maintenance |
| 65 | Website monitoring | 2013-07-01 → 2013-08-29 (+59d) | 2013-07-01 → 2013-10-23 (+114d) | 1d? → 40d |  | none → 63 | resources none → Michael McMorrow [50%] |
| 66 | Bug fixing | 2013-07-01 → 2013-08-29 (+59d) | 2013-07-01 → 2013-10-23 (+114d) | 1d? → 40d |  | none → 63 | resources none → Michael McMorrow [50%] |
| 68 | Project Close | 2013-07-01 → 2013-10-23 (+114d) | 2013-07-01 → 2013-10-23 (+114d) |  | 1d → 0d | none → 66 |  |

## Version 4 (saved 2013-04-22, file D10126532InitialPlan.mpp)

Last finish 2013-10-23 → 2014-01-01 (+70d).

Added:

| ID | Task | Duration | Start | Finish | Predecessors | Resources |
| --- | --- | --- | --- | --- | --- | --- |
| 66 | Hosting Costs | 90d | 2013-08-28 | 2014-01-01 | 63 | CSP Production Account |

Changed:

| ID | Task | Start | Finish | Duration | Other |
| --- | --- | --- | --- | --- | --- |
| 64 | **On going Support & Maintenance** | 2013-08-29 → 2013-08-28 (-1d) | 2013-10-23 → 2014-01-01 (+70d) | 40d → 90d |  |
| 65 | Website monitoring |  | 2013-10-23 → 2014-01-01 (+70d) | 40d → 90d | resources Michael McMorrow [50%] → Michael McMorrow [25%] |
| 67 | Bug fixing |  | 2013-10-23 → 2014-01-01 (+70d) | 40d → 90d | resources Michael McMorrow [50%] → Michael McMorrow [10%] |
| 68 | iOS Bug Fixing & Releases |  | 2013-10-23 → 2014-01-01 (+70d) | 40d → 90d | resources Carmel Keegan [30%] → Carmel Keegan [15%] |
| 69 | Project Close | 2013-10-23 → 2014-01-01 (+70d) | 2013-10-23 → 2014-01-01 (+70d) |  |  |

## Version 5 (saved 2013-04-23, file D10126532InitialPlan.mpp)

Note of the change: More updates

Last finish stays 2014-01-01.

Added:

| ID | Task | Duration | Start | Finish | Predecessors | Resources |
| --- | --- | --- | --- | --- | --- | --- |
| 64 | CSP Production Account for Beta Customer | 17d | 2013-08-06 | 2013-08-29 | 40 | CSP Staging [408 fixed rate] |

Changed:

| ID | Task | Finish | Duration | Total float | Other |
| --- | --- | --- | --- | --- | --- |
| 11 | **Technical Implementation** | 2013-08-28 → 2013-08-29 (+1d) | 35d → 35.5d |  |  |
| 24 | Implement Thesaurus Service Plugin |  |  |  | resources Gary Dolan → Gary Dolan; CSP Test Account [12.5%] |
| 26 | Integrate Thesaurus Data with HTML/jQuery |  |  |  | resources Gary Dolan → Gary Dolan; CSP Test Account [75%] |
| 29 | Develop deployment script for production |  |  | 65.5d → 115.5d | resources Fergal Browne; CSP Production Account → Fergal Browne; CSP Production Account [33.3%] |
| 35 | Integrate SEO Ad Campaign Framework |  |  | 61.5d → 111.5d | resources Michael McMorrow → Michael McMorrow; CSP Production Account [25%]; CSP Test Account [75%] |
| 36 | Code Domain Name Availabity Module |  |  |  | resources Gary Dolan → Gary Dolan; CSP Test Account [18.8%]; CSP Production Account [6.2%] |
| 39 | Develop automated test for sprint |  |  | 60.5d → 110.5d | resources Elaine McLaughlin → Elaine McLaughlin; CSP Production Account [25%]; CSP Test Account [25%] |
| 67 | Cloud Hosting Costs |  |  |  | was named Hosting Costs |

## Version 6 (saved 2013-04-28, file D10126532InitialPlan.mpp)

Note of the change: committing ms project before move project start date attempt

Last finish 2014-01-01 → 2014-01-09 (+8d).

Added:

| ID | Task | Duration | Start | Finish | Predecessors |
| --- | --- | --- | --- | --- | --- |
| 4 | Project Initation Comlete | 0d | 2013-07-05 | 2013-07-05 | 3 |
| 12 | Technical Design Documents Complete | 0d | 2013-07-10 | 2013-07-10 | 8 |

Changed:

| ID | Task | Start | Finish | Total float | Other |
| --- | --- | --- | --- | --- | --- |
| 1 | **Project Planning** |  | 2013-08-29 → 2013-08-30 (+1d) |  |  |
| 5 | Project Review, Lessons Learned | 2013-08-29 → 2013-08-30 (+1d) | 2013-08-29 → 2013-08-30 (+1d) |  |  |
| 13 | **Technical Implementation** |  | 2013-08-29 → 2013-08-30 (+1d) |  |  |
| 18 | Integrate OAuth for Authentication |  |  |  | resources Michael McMorrow; CSP Test Account [16%] → Michael McMorrow; CSP Test Account [16 fixed rate hours] |
| 19 | Login page & dummy landing page with basic user info |  |  |  | resources Michael McMorrow; CSP Test Account [75%] → Michael McMorrow; CSP Test Account [8 fixed rate hours] |
| 21 | Develop Deployment Script for test Environment |  |  | 121.5d → 122.5d | resources Fergal Browne; CSP Test Account [50%] → Fergal Browne; CSP Test Account [16 fixed rate hours] |
| 26 | Implement Thesaurus Service Plugin |  |  |  | resources Gary Dolan; CSP Test Account [12.5%] → Gary Dolan; CSP Test Account [12 fixed rate hours] |
| 27 | Code Main HTML5/jQuery page |  |  | 0.5d → 2d | resources Michael McMorrow; CSP Test Account [50%] → Michael McMorrow; CSP Test Account [8 fixed rate hours] |
| 28 | Integrate Thesaurus Data with HTML/jQuery |  |  |  | resources Gary Dolan; CSP Test Account [75%] → Gary Dolan; CSP Test Account [6 fixed rate hours] |
| 30 | Bug Fixes from previous sprint |  |  |  | resources Gary Dolan; Michael McMorrow → Gary Dolan; Michael McMorrow; CSP Test Account [6 fixed rate hours] |
| 31 | Develop deployment script for production |  |  |  | resources Fergal Browne; CSP Production Account [33.3%] → Fergal Browne; CSP Production Account [24 fixed rate hours] |
| 35 | **Sprint 3** |  | 2013-08-06 → 2013-08-07 (+1d) |  |  |
| 37 | Integrate SEO Ad Campaign Framework |  |  |  | resources Michael McMorrow; CSP Production Account [25%]; CSP Test Account [75%] → Michael McMorrow; CSP Production Account [4 fixed rate hours]; CSP Test Account [4 fixed rate hours] |
| 38 | Code Domain Name Availabity Module |  |  |  | resources Gary Dolan; CSP Test Account [18.8%]; CSP Production Account [6.2%] → Gary Dolan; CSP Test Account [16 fixed rate hours]; CSP Production Account [0.16 fixed rate hours] |
| 40 | Bug Fixes from previous sprint |  | 2013-08-06 → 2013-08-07 (+1d) |  | resources Michael McMorrow → Michael McMorrow; CSP Test Account [8 fixed rate hours] |
| 41 | Develop automated test for sprint |  |  |  | resources Elaine McLaughlin; CSP Production Account [25%]; CSP Test Account [25%] → Elaine McLaughlin; CSP Test Account [24 fixed rate hours] |
| 42 | Release Sprint | 2013-08-06 → 2013-08-07 (+1d) | 2013-08-06 → 2013-08-07 (+1d) |  |  |
| 43 | Sprint Review & Improve Process | 2013-08-06 → 2013-08-07 (+1d) | 2013-08-06 → 2013-08-07 (+1d) |  |  |
| 44 | **Sprint 4** | 2013-08-07 → 2013-08-08 (+1d) | 2013-08-14 → 2013-08-15 (+1d) |  |  |
| 45 | Sprint Plan | 2013-08-07 → 2013-08-08 (+1d) | 2013-08-07 → 2013-08-08 (+1d) |  |  |
| 46 | Code Social Real Estate Availability Module | 2013-08-07 → 2013-08-08 (+1d) | 2013-08-12 → 2013-08-13 (+1d) |  | resources Gary Dolan; Michael McMorrow → Gary Dolan; Michael McMorrow; CSP Test Account [72 fixed rate hours] |
| 47 | iOS App: Social Real Estate Integration | 2013-08-08 → 2013-08-09 (+1d) | 2013-08-09 → 2013-08-12 (+3d) |  |  |
| 48 | Develop automated test for sprint | 2013-08-07 → 2013-08-08 (+1d) | 2013-08-09 → 2013-08-12 (+3d) |  | resources Elaine McLaughlin → Elaine McLaughlin; CSP Test Account [16 fixed rate hours] |
| 49 | Bug Fixes from previous sprint | 2013-08-12 → 2013-08-13 (+1d) | 2013-08-14 → 2013-08-15 (+1d) |  | resources Michael McMorrow → Michael McMorrow; CSP Test Account [8 fixed rate hours] |
| 50 | Release Sprint | 2013-08-14 → 2013-08-15 (+1d) | 2013-08-14 → 2013-08-15 (+1d) |  |  |
| 51 | Sprint Review & Improve Process | 2013-08-14 → 2013-08-15 (+1d) | 2013-08-14 → 2013-08-15 (+1d) |  |  |
| 52 | **Sprint 5** | 2013-08-15 → 2013-08-16 (+1d) | 2013-08-21 → 2013-08-22 (+1d) |  |  |
| 53 | Sprint Plan | 2013-08-15 → 2013-08-16 (+1d) | 2013-08-15 → 2013-08-16 (+1d) |  |  |
| 54 | Bug Fixes from previous sprint | 2013-08-15 → 2013-08-16 (+1d) | 2013-08-19 → 2013-08-20 (+1d) |  | resources Gary Dolan; Michael McMorrow → Gary Dolan; Michael McMorrow; CSP Test Account [12 fixed rate hours] |
| 55 | Test scale-out (stress test) | 2013-08-15 → 2013-08-16 (+1d) | 2013-08-19 → 2013-08-20 (+1d) |  | resources Fergal Browne; Elaine McLaughlin; Gary Dolan; Michael McMorrow → Fergal Browne; Elaine McLaughlin; Gary Dolan; Michael McMorrow; CSP Production Account [96 fixed rate hours] |
| 56 | Bug Fixing from scale-out testing | 2013-08-19 → 2013-08-20 (+1d) | 2013-08-21 → 2013-08-22 (+1d) |  | resources Gary Dolan; Michael McMorrow → Gary Dolan; Michael McMorrow; CSP Test Account [8 fixed rate hours]; CSP Production Account [8 fixed rate hours] |
| 57 | iOS App: Final Integration and bug fixing | 2013-08-15 → 2013-08-16 (+1d) | 2013-08-19 → 2013-08-20 (+1d) |  |  |
| 58 | Release Sprint | 2013-08-21 → 2013-08-22 (+1d) | 2013-08-21 → 2013-08-22 (+1d) |  |  |
| 59 | Sprint Review & Improve Process | 2013-08-21 → 2013-08-22 (+1d) | 2013-08-21 → 2013-08-22 (+1d) |  |  |
| 60 | Release to Market (Go Live) | 2013-08-21 → 2013-08-22 (+1d) | 2013-08-21 → 2013-08-22 (+1d) |  |  |
| 61 | **Sprint 6** | 2013-08-22 → 2013-08-23 (+1d) | 2013-08-28 → 2013-08-29 (+1d) |  |  |
| 62 | Sprint Plan | 2013-08-22 → 2013-08-23 (+1d) | 2013-08-22 → 2013-08-23 (+1d) |  |  |
| 63 | Post Live Bug Fixing | 2013-08-22 → 2013-08-23 (+1d) | 2013-08-28 → 2013-08-29 (+1d) |  |  |
| 64 | Release Sprint | 2013-08-28 → 2013-08-29 (+1d) | 2013-08-28 → 2013-08-29 (+1d) |  |  |
| 65 | Sprint Review & Improve Process | 2013-08-28 → 2013-08-29 (+1d) | 2013-08-28 → 2013-08-29 (+1d) |  |  |
| 66 | CSP Production Account for Beta Customer | 2013-08-06 → 2013-08-07 (+1d) | 2013-08-29 → 2013-08-30 (+1d) |  | resources CSP Staging [408 fixed rate] → CSP Production Account [408 fixed rate hours] |
| 67 | **On going Support & Maintenance** | 2013-08-28 → 2013-08-30 (+2d) | 2014-01-01 → 2014-01-09 (+8d) |  |  |
| 68 | Website monitoring | 2013-08-29 → 2013-08-30 (+1d) | 2014-01-01 → 2014-01-09 (+8d) |  |  |
| 69 | Cloud Hosting Costs | 2013-08-28 → 2013-08-30 (+2d) | 2014-01-01 → 2014-01-09 (+8d) |  | resources CSP Production Account → CSP Production Account [2160 fixed rate hours] |
| 70 | Bug fixing | 2013-08-29 → 2013-08-30 (+1d) | 2014-01-01 → 2014-01-09 (+8d) |  |  |
| 71 | iOS Bug Fixing & Releases | 2013-08-29 → 2013-08-30 (+1d) | 2014-01-01 → 2014-01-09 (+8d) |  |  |
| 72 | Project Close | 2014-01-01 → 2014-01-09 (+8d) | 2014-01-01 → 2014-01-09 (+8d) |  |  |

## Version 7 (saved 2013-04-29, file D10126532InitialPlan.mpp)

Note of the change: Saved baseline and created Adjusted Plan MS Project file

Last finish 2014-01-09 → 2013-12-06 (-34d).

Changed:

| ID | Task | Start | Finish | Other |
| --- | --- | --- | --- | --- |
| 1 | **Project Planning** | 2013-07-01 → 2013-06-03 (-28d) | 2013-08-30 → 2013-08-01 (-29d) | baseline start none → 2013-06-03; baseline finish none → 2013-08-01 |
| 2 | Project Charter Document | 2013-07-01 → 2013-06-03 (-28d) | 2013-07-02 → 2013-06-04 (-28d) | baseline start none → 2013-06-03; baseline finish none → 2013-06-04 |
| 3 | Project Management Plan | 2013-07-03 → 2013-06-05 (-28d) | 2013-07-05 → 2013-06-07 (-28d) | baseline start none → 2013-06-05; baseline finish none → 2013-06-07 |
| 4 | Project Initation Comlete | 2013-07-05 → 2013-06-07 (-28d) | 2013-07-05 → 2013-06-07 (-28d) | baseline start none → 2013-06-07; baseline finish none → 2013-06-07 |
| 5 | Project Review, Lessons Learned | 2013-08-30 → 2013-08-01 (-29d) | 2013-08-30 → 2013-08-01 (-29d) | baseline start none → 2013-08-01; baseline finish none → 2013-08-01 |
| 6 | **Technical Product Design** | 2013-07-01 → 2013-06-03 (-28d) | 2013-07-10 → 2013-06-12 (-28d) | baseline start none → 2013-06-03; baseline finish none → 2013-06-12 |
| 7 | Requirements Gathering | 2013-07-01 → 2013-06-03 (-28d) | 2013-07-03 → 2013-06-05 (-28d) | baseline start none → 2013-06-03; baseline finish none → 2013-06-05 |
| 8 | Software Architecture Design | 2013-07-04 → 2013-06-06 (-28d) | 2013-07-10 → 2013-06-12 (-28d) | baseline start none → 2013-06-06; baseline finish none → 2013-06-12 |
| 9 | Cloud Infrastructure Design | 2013-07-04 → 2013-06-06 (-28d) | 2013-07-10 → 2013-06-12 (-28d) | baseline start none → 2013-06-06; baseline finish none → 2013-06-12 |
| 10 | Test Plan Design | 2013-07-04 → 2013-06-06 (-28d) | 2013-07-09 → 2013-06-11 (-28d) | baseline start none → 2013-06-06; baseline finish none → 2013-06-11 |
| 11 | User Interface Design | 2013-07-04 → 2013-06-06 (-28d) | 2013-07-08 → 2013-06-10 (-28d) | baseline start none → 2013-06-06; baseline finish none → 2013-06-10 |
| 12 | Technical Design Documents Complete | 2013-07-10 → 2013-06-12 (-28d) | 2013-07-10 → 2013-06-12 (-28d) | baseline start none → 2013-06-12; baseline finish none → 2013-06-12 |
| 13 | **Technical Implementation** | 2013-07-11 → 2013-06-13 (-28d) | 2013-08-30 → 2013-08-01 (-29d) | baseline start none → 2013-06-13; baseline finish none → 2013-08-01 |
| 14 | **Sprint 1** | 2013-07-11 → 2013-06-13 (-28d) | 2013-07-18 → 2013-06-20 (-28d) | baseline start none → 2013-06-13; baseline finish none → 2013-06-20 |
| 15 | Sprint Plan | 2013-07-11 → 2013-06-13 (-28d) | 2013-07-11 → 2013-06-13 (-28d) | baseline start none → 2013-06-13; baseline finish none → 2013-06-13 |
| 16 | Implement Architecture Framework | 2013-07-11 → 2013-06-13 (-28d) | 2013-07-18 → 2013-06-20 (-28d) | baseline start none → 2013-06-13; baseline finish none → 2013-06-20 |
| 17 | Code Database Schema & Initial data | 2013-07-11 → 2013-06-13 (-28d) | 2013-07-15 → 2013-06-17 (-28d) | baseline start none → 2013-06-13; baseline finish none → 2013-06-17 |
| 18 | Integrate OAuth for Authentication | 2013-07-15 → 2013-06-17 (-28d) | 2013-07-17 → 2013-06-19 (-28d) | baseline start none → 2013-06-17; baseline finish none → 2013-06-19 |
| 19 | Login page & dummy landing page with basic user info | 2013-07-17 → 2013-06-19 (-28d) | 2013-07-18 → 2013-06-20 (-28d) | baseline start none → 2013-06-19; baseline finish none → 2013-06-20 |
| 20 | Develop automated tests for sprint | 2013-07-11 → 2013-06-13 (-28d) | 2013-07-15 → 2013-06-17 (-28d) | baseline start none → 2013-06-13; baseline finish none → 2013-06-17 |
| 21 | Develop Deployment Script for test Environment | 2013-07-11 → 2013-06-13 (-28d) | 2013-07-15 → 2013-06-17 (-28d) | baseline start none → 2013-06-13; baseline finish none → 2013-06-17 |
| 22 | Release Sprint | 2013-07-18 → 2013-06-20 (-28d) | 2013-07-18 → 2013-06-20 (-28d) | baseline start none → 2013-06-20; baseline finish none → 2013-06-20 |
| 23 | Sprint Review & Improve Process | 2013-07-18 → 2013-06-20 (-28d) | 2013-07-18 → 2013-06-20 (-28d) | baseline start none → 2013-06-20; baseline finish none → 2013-06-20 |
| 24 | **Sprint 2** | 2013-07-19 → 2013-06-21 (-28d) | 2013-07-26 → 2013-06-28 (-28d) | baseline start none → 2013-06-21; baseline finish none → 2013-06-28 |
| 25 | Sprint Plan | 2013-07-19 → 2013-06-21 (-28d) | 2013-07-19 → 2013-06-21 (-28d) | baseline start none → 2013-06-21; baseline finish none → 2013-06-21 |
| 26 | Implement Thesaurus Service Plugin | 2013-07-19 → 2013-06-21 (-28d) | 2013-07-24 → 2013-06-26 (-28d) | baseline start none → 2013-06-21; baseline finish none → 2013-06-26 |
| 27 | Code Main HTML5/jQuery page | 2013-07-19 → 2013-06-21 (-28d) | 2013-07-23 → 2013-06-25 (-28d) | baseline start none → 2013-06-21; baseline finish none → 2013-06-25 |
| 28 | Integrate Thesaurus Data with HTML/jQuery | 2013-07-24 → 2013-06-26 (-28d) | 2013-07-25 → 2013-06-27 (-28d) | baseline start none → 2013-06-26; baseline finish none → 2013-06-27 |
| 29 | iOS App: Login Page + Thesaurus Integration | 2013-07-19 → 2013-06-21 (-28d) | 2013-07-25 → 2013-06-27 (-28d) | baseline start none → 2013-06-21; baseline finish none → 2013-06-27 |
| 30 | Bug Fixes from previous sprint | 2013-07-25 → 2013-06-27 (-28d) | 2013-07-26 → 2013-06-28 (-28d) | baseline start none → 2013-06-27; baseline finish none → 2013-06-28 |
| 31 | Develop deployment script for production | 2013-07-19 → 2013-06-21 (-28d) | 2013-07-24 → 2013-06-26 (-28d) | baseline start none → 2013-06-21; baseline finish none → 2013-06-26 |
| 32 | Develop automated test for sprint | 2013-07-19 → 2013-06-21 (-28d) | 2013-07-24 → 2013-06-26 (-28d) | baseline start none → 2013-06-21; baseline finish none → 2013-06-26 |
| 33 | Release Sprint | 2013-07-26 → 2013-06-28 (-28d) | 2013-07-26 → 2013-06-28 (-28d) | baseline start none → 2013-06-28; baseline finish none → 2013-06-28 |
| 34 | Sprint Review & Improve Process | 2013-07-26 → 2013-06-28 (-28d) | 2013-07-26 → 2013-06-28 (-28d) | baseline start none → 2013-06-28; baseline finish none → 2013-06-28 |
| 35 | **Sprint 3** | 2013-07-29 → 2013-07-01 (-28d) | 2013-08-07 → 2013-07-09 (-29d) | baseline start none → 2013-07-01; baseline finish none → 2013-07-09 |
| 36 | Sprint Plan | 2013-07-29 → 2013-07-01 (-28d) | 2013-07-29 → 2013-07-01 (-28d) | baseline start none → 2013-07-01; baseline finish none → 2013-07-01 |
| 37 | Integrate SEO Ad Campaign Framework | 2013-07-29 → 2013-07-01 (-28d) | 2013-07-30 → 2013-07-02 (-28d) | baseline start none → 2013-07-01; baseline finish none → 2013-07-02 |
| 38 | Code Domain Name Availabity Module | 2013-07-29 → 2013-07-01 (-28d) | 2013-08-02 → 2013-07-05 (-28d) | baseline start none → 2013-07-01; baseline finish none → 2013-07-05 |
| 39 | iOS App: Integration with SEO, Domain Name availability | 2013-07-30 → 2013-07-02 (-28d) | 2013-08-02 → 2013-07-05 (-28d) | baseline start none → 2013-07-02; baseline finish none → 2013-07-05 |
| 40 | Bug Fixes from previous sprint | 2013-08-02 → 2013-07-05 (-28d) | 2013-08-07 → 2013-07-09 (-29d) | baseline start none → 2013-07-05; baseline finish none → 2013-07-09 |
| 41 | Develop automated test for sprint | 2013-07-29 → 2013-07-01 (-28d) | 2013-07-31 → 2013-07-03 (-28d) | baseline start none → 2013-07-01; baseline finish none → 2013-07-03 |
| 42 | Release Sprint | 2013-08-07 → 2013-07-09 (-29d) | 2013-08-07 → 2013-07-09 (-29d) | baseline start none → 2013-07-09; baseline finish none → 2013-07-09 |
| 43 | Sprint Review & Improve Process | 2013-08-07 → 2013-07-09 (-29d) | 2013-08-07 → 2013-07-09 (-29d) | baseline start none → 2013-07-09; baseline finish none → 2013-07-09 |
| 44 | **Sprint 4** | 2013-08-08 → 2013-07-10 (-29d) | 2013-08-15 → 2013-07-17 (-29d) | baseline start none → 2013-07-10; baseline finish none → 2013-07-17 |
| 45 | Sprint Plan | 2013-08-08 → 2013-07-10 (-29d) | 2013-08-08 → 2013-07-10 (-29d) | baseline start none → 2013-07-10; baseline finish none → 2013-07-10 |
| 46 | Code Social Real Estate Availability Module | 2013-08-08 → 2013-07-10 (-29d) | 2013-08-13 → 2013-07-15 (-29d) | baseline start none → 2013-07-10; baseline finish none → 2013-07-15 |
| 47 | iOS App: Social Real Estate Integration | 2013-08-09 → 2013-07-11 (-29d) | 2013-08-12 → 2013-07-12 (-31d) | baseline start none → 2013-07-11; baseline finish none → 2013-07-12 |
| 48 | Develop automated test for sprint | 2013-08-08 → 2013-07-10 (-29d) | 2013-08-12 → 2013-07-12 (-31d) | baseline start none → 2013-07-10; baseline finish none → 2013-07-12 |
| 49 | Bug Fixes from previous sprint | 2013-08-13 → 2013-07-15 (-29d) | 2013-08-15 → 2013-07-17 (-29d) | baseline start none → 2013-07-15; baseline finish none → 2013-07-17 |
| 50 | Release Sprint | 2013-08-15 → 2013-07-17 (-29d) | 2013-08-15 → 2013-07-17 (-29d) | baseline start none → 2013-07-17; baseline finish none → 2013-07-17 |
| 51 | Sprint Review & Improve Process | 2013-08-15 → 2013-07-17 (-29d) | 2013-08-15 → 2013-07-17 (-29d) | baseline start none → 2013-07-17; baseline finish none → 2013-07-17 |
| 52 | **Sprint 5** | 2013-08-16 → 2013-07-18 (-29d) | 2013-08-22 → 2013-07-24 (-29d) | baseline start none → 2013-07-18; baseline finish none → 2013-07-24 |
| 53 | Sprint Plan | 2013-08-16 → 2013-07-18 (-29d) | 2013-08-16 → 2013-07-18 (-29d) | baseline start none → 2013-07-18; baseline finish none → 2013-07-18 |
| 54 | Bug Fixes from previous sprint | 2013-08-16 → 2013-07-18 (-29d) | 2013-08-20 → 2013-07-22 (-29d) | baseline start none → 2013-07-18; baseline finish none → 2013-07-22 |
| 55 | Test scale-out (stress test) | 2013-08-16 → 2013-07-18 (-29d) | 2013-08-20 → 2013-07-22 (-29d) | baseline start none → 2013-07-18; baseline finish none → 2013-07-22 |
| 56 | Bug Fixing from scale-out testing | 2013-08-20 → 2013-07-22 (-29d) | 2013-08-22 → 2013-07-24 (-29d) | baseline start none → 2013-07-22; baseline finish none → 2013-07-24 |
| 57 | iOS App: Final Integration and bug fixing | 2013-08-16 → 2013-07-18 (-29d) | 2013-08-20 → 2013-07-22 (-29d) | baseline start none → 2013-07-18; baseline finish none → 2013-07-22 |
| 58 | Release Sprint | 2013-08-22 → 2013-07-24 (-29d) | 2013-08-22 → 2013-07-24 (-29d) | baseline start none → 2013-07-24; baseline finish none → 2013-07-24 |
| 59 | Sprint Review & Improve Process | 2013-08-22 → 2013-07-24 (-29d) | 2013-08-22 → 2013-07-24 (-29d) | baseline start none → 2013-07-24; baseline finish none → 2013-07-24 |
| 60 | Release to Market (Go Live) | 2013-08-22 → 2013-07-24 (-29d) | 2013-08-22 → 2013-07-24 (-29d) | baseline start none → 2013-07-24; baseline finish none → 2013-07-24 |
| 61 | **Sprint 6** | 2013-08-23 → 2013-07-25 (-29d) | 2013-08-29 → 2013-07-31 (-29d) | baseline start none → 2013-07-25; baseline finish none → 2013-07-31 |
| 62 | Sprint Plan | 2013-08-23 → 2013-07-25 (-29d) | 2013-08-23 → 2013-07-25 (-29d) | baseline start none → 2013-07-25; baseline finish none → 2013-07-25 |
| 63 | Post Live Bug Fixing | 2013-08-23 → 2013-07-25 (-29d) | 2013-08-29 → 2013-07-31 (-29d) | baseline start none → 2013-07-25; baseline finish none → 2013-07-31 |
| 64 | Release Sprint | 2013-08-29 → 2013-07-31 (-29d) | 2013-08-29 → 2013-07-31 (-29d) | baseline start none → 2013-07-31; baseline finish none → 2013-07-31 |
| 65 | Sprint Review & Improve Process | 2013-08-29 → 2013-07-31 (-29d) | 2013-08-29 → 2013-07-31 (-29d) | baseline start none → 2013-07-31; baseline finish none → 2013-07-31 |
| 66 | CSP Production Account for Beta Customer | 2013-08-07 → 2013-07-09 (-29d) | 2013-08-30 → 2013-08-01 (-29d) | baseline start none → 2013-07-09; baseline finish none → 2013-08-01 |
| 67 | **On going Support & Maintenance** | 2013-08-30 → 2013-08-01 (-29d) | 2014-01-09 → 2013-12-06 (-34d) | baseline start none → 2013-08-01; baseline finish none → 2013-12-06 |
| 68 | Website monitoring | 2013-08-30 → 2013-08-01 (-29d) | 2014-01-09 → 2013-12-06 (-34d) | baseline start none → 2013-08-01; baseline finish none → 2013-12-06 |
| 69 | Cloud Hosting Costs | 2013-08-30 → 2013-08-01 (-29d) | 2014-01-09 → 2013-12-06 (-34d) | baseline start none → 2013-08-01; baseline finish none → 2013-12-06 |
| 70 | Bug fixing | 2013-08-30 → 2013-08-01 (-29d) | 2014-01-09 → 2013-12-06 (-34d) | baseline start none → 2013-08-01; baseline finish none → 2013-12-06 |

| ID | Task | Start | Finish | Other |
| --- | --- | --- | --- | --- |
| 71 | iOS Bug Fixing & Releases | 2013-08-30 → 2013-08-01 (-29d) | 2014-01-09 → 2013-12-06 (-34d) | baseline start none → 2013-08-01; baseline finish none → 2013-12-06 |
| 72 | Project Close | 2014-01-09 → 2013-12-06 (-34d) | 2014-01-09 → 2013-12-06 (-34d) | baseline start none → 2013-12-06; baseline finish none → 2013-12-06 |

## Version 8 (saved 2013-04-29, file D10126532AdjustedPlan.mpp)

Note of the change: Penultimate update before proof read and submission

Last finish stays 2013-12-06. Complete tasks 0 → 56.

Changed:

| ID | Task | Start | Finish | Duration | Complete | Total float | Predecessors | Other |
| --- | --- | --- | --- | --- | --- | --- | --- | --- |
| 1 | **Project Planning** | 2013-06-03 A | 2013-08-01 → 2013-08-02 (+1d) | 44d → 45d | 0% → 83% | 89d → 88d |  |  |
| 2 | Project Charter Document | 2013-06-03 A | 2013-06-04 A |  | 0% → 100% | 128d → none |  |  |
| 3 | Project Management Plan | 2013-06-05 A | 2013-06-07 A |  | 0% → 100% | 128d → none |  |  |
| 4 | Project Initation Comlete | 2013-06-07 A | 2013-06-07 A |  | 0% → 100% | 128d → none |  |  |
| 5 | Project Review, Lessons Learned | 2013-08-01 → 2013-08-02 (+1d) | 2013-08-01 → 2013-08-02 (+1d) |  |  | 89d → 88d |  |  |
| 6 | **Technical Product Design** | 2013-06-03 A | 2013-06-12 A |  | 0% → 100% | 0d → none |  |  |
| 7 | Requirements Gathering | 2013-06-03 A | 2013-06-05 A |  | 0% → 100% | 0d → none |  |  |
| 8 | Software Architecture Design | 2013-06-06 A | 2013-06-12 A |  | 0% → 100% | 0d → none |  |  |
| 9 | Cloud Infrastructure Design | 2013-06-06 A | 2013-06-12 A |  | 0% → 100% | 125d → none |  |  |
| 10 | Test Plan Design | 2013-06-06 A | 2013-06-11 A |  | 0% → 100% | 126d → none |  |  |
| 11 | User Interface Design | 2013-06-06 A | 2013-06-10 A |  | 0% → 100% | 127d → none |  |  |
| 12 | Technical Design Documents Complete | 2013-06-12 A | 2013-06-12 A |  | 0% → 100% | 125d → none |  |  |
| 13 | **Technical Implementation** | 2013-06-13 A | 2013-08-01 A | 35.5d → 36d | 0% → 100% | 0d → none |  |  |
| 14 | **Sprint 1** | 2013-06-13 A | 2013-06-20 A |  | 0% → 100% | 0d → none |  |  |
| 15 | Sprint Plan | 2013-06-13 A | 2013-06-13 A |  | 0% → 100% | 0d → none |  |  |
| 16 | Implement Architecture Framework | 2013-06-13 A | 2013-06-20 A |  | 0% → 100% | 0d → none |  |  |
| 17 | Code Database Schema & Initial data | 2013-06-13 A | 2013-06-17 A |  | 0% → 100% | 119.5d → none |  |  |
| 18 | Integrate OAuth for Authentication | 2013-06-17 A | 2013-06-19 A |  | 0% → 100% | 119.5d → none |  |  |
| 19 | Login page & dummy landing page with basic user info | 2013-06-19 A | 2013-06-20 A |  | 0% → 100% | 119.5d → none |  |  |
| 20 | Develop automated tests for sprint | 2013-06-13 A | 2013-06-17 A |  | 0% → 100% | 122.5d → none |  |  |
| 21 | Develop Deployment Script for test Environment | 2013-06-13 A | 2013-06-17 A |  | 0% → 100% | 122.5d → none |  |  |
| 22 | Release Sprint | 2013-06-20 A | 2013-06-20 A |  | 0% → 100% | 0d → none |  |  |
| 23 | Sprint Review & Improve Process | 2013-06-20 A | 2013-06-20 A |  | 0% → 100% | 0d → none |  |  |
| 24 | **Sprint 2** | 2013-06-21 A | 2013-06-28 A |  | 0% → 100% | 0d → none |  |  |
| 25 | Sprint Plan | 2013-06-21 A | 2013-06-21 A |  | 0% → 100% | 0d → none |  |  |
| 26 | Implement Thesaurus Service Plugin | 2013-06-21 A | 2013-06-26 A |  | 0% → 100% | 0d → none |  |  |
| 27 | Code Main HTML5/jQuery page | 2013-06-21 A | 2013-06-25 A |  | 0% → 100% | 2d → none |  |  |
| 28 | Integrate Thesaurus Data with HTML/jQuery | 2013-06-26 A | 2013-06-27 A |  | 0% → 100% | 0d → none |  |  |
| 29 | iOS App: Login Page + Thesaurus Integration | 2013-06-21 A | 2013-06-27 A |  | 0% → 100% | 114.5d → none |  |  |
| 30 | Bug Fixes from previous sprint | 2013-06-27 A | 2013-06-28 A |  | 0% → 100% | 0d → none |  |  |
| 31 | Develop deployment script for production | 2013-06-21 A | 2013-06-26 A |  | 0% → 100% | 115.5d → none |  |  |
| 32 | Develop automated test for sprint | 2013-06-21 A | 2013-06-26 A |  | 0% → 100% | 115.5d → none |  |  |
| 33 | Release Sprint | 2013-06-28 A | 2013-06-28 A |  | 0% → 100% | 0d → none |  |  |
| 34 | Sprint Review & Improve Process | 2013-06-28 A | 2013-06-28 A |  | 0% → 100% | 0d → none |  |  |
| 35 | **Sprint 3** | 2013-07-01 A | 2013-07-09 A |  | 0% → 100% | 0d → none |  |  |
| 36 | Sprint Plan | 2013-07-01 A | 2013-07-01 A |  | 0% → 100% | 0d → none |  |  |
| 37 | Integrate SEO Ad Campaign Framework | 2013-07-01 A | 2013-07-02 A |  | 0% → 100% | 111.5d → none |  |  |
| 38 | Code Domain Name Availabity Module | 2013-07-01 A | 2013-07-05 A |  | 0% → 100% | 0d → none |  |  |
| 39 | iOS App: Integration with SEO, Domain Name availability | 2013-07-02 A | 2013-07-05 A |  | 0% → 100% | 108.5d → none |  |  |
| 40 | Bug Fixes from previous sprint | 2013-07-05 A | 2013-07-09 A |  | 0% → 100% | 0d → none |  |  |
| 41 | Develop automated test for sprint | 2013-07-01 A | 2013-07-03 A |  | 0% → 100% | 110.5d → none |  |  |
| 42 | Release Sprint | 2013-07-09 A | 2013-07-09 A |  | 0% → 100% | 0d → none |  |  |
| 43 | Sprint Review & Improve Process | 2013-07-09 A | 2013-07-09 A |  | 0% → 100% | 0d → none |  |  |
| 44 | **Sprint 4** | 2013-07-10 A | 2013-07-17 A |  | 0% → 100% | 0d → none |  |  |
| 45 | Sprint Plan | 2013-07-10 A | 2013-07-10 A |  | 0% → 100% | 0d → none |  |  |
| 46 | Code Social Real Estate Availability Module | 2013-07-10 A | 2013-07-15 A |  | 0% → 100% | 0d → none |  |  |
| 47 | iOS App: Social Real Estate Integration | 2013-07-11 A | 2013-07-12 A |  | 0% → 100% | 103d → none |  |  |
| 48 | Develop automated test for sprint | 2013-07-10 A | 2013-07-12 → 2013-07-15 A (+3d) | 2d → 3d | 0% → 100% | 103.5d → none |  | resources Elaine McLaughlin; CSP Test Account [16 fixed rate hours] → Elaine McLaughlin; CSP Test Account [16 fixed rate hours]; Fergal Browne [85%]; Michael McMorrow [15%] |
| 49 | Bug Fixes from previous sprint | 2013-07-15 A | 2013-07-17 A |  | 0% → 100% | 0d → none |  |  |
| 50 | Release Sprint | 2013-07-17 A | 2013-07-17 A |  | 0% → 100% | 0d → none |  |  |
| 51 | Sprint Review & Improve Process | 2013-07-17 A | 2013-07-17 A |  | 0% → 100% | 0d → none |  |  |
| 52 | **Sprint 5** | 2013-07-18 A | 2013-07-24 → 2013-07-25 A (+1d) | 5d → 6d | 0% → 100% | 0d → none |  |  |
| 53 | Sprint Plan | 2013-07-18 A | 2013-07-18 A |  | 0% → 100% | 0d → none |  |  |
| 54 | Bug Fixes from previous sprint | 2013-07-18 A | 2013-07-22 A |  | 0% → 100% | 97.5d → none |  |  |
| 55 | Test scale-out (stress test) | 2013-07-18 → 2013-07-19 A (+1d) | 2013-07-22 → 2013-07-23 A (+1d) |  | 0% → 100% | 0d → none | 53 → 53FS+1d |  |
| 56 | Bug Fixing from scale-out testing | 2013-07-22 → 2013-07-23 A (+1d) | 2013-07-24 → 2013-07-25 A (+1d) |  | 0% → 100% | 0d → none |  |  |
| 57 | iOS App: Final Integration and bug fixing | 2013-07-18 A | 2013-07-22 A |  | 0% → 100% | 97.5d → none |  |  |
| 58 | Release Sprint | 2013-07-24 → 2013-07-25 A (+1d) | 2013-07-24 → 2013-07-25 A (+1d) |  | 0% → 100% | 0d → none |  |  |
| 59 | Sprint Review & Improve Process | 2013-07-24 → 2013-07-25 A (+1d) | 2013-07-24 → 2013-07-25 A (+1d) |  | 0% → 100% | 0d → none |  |  |
| 60 | Release to Market (Go Live) | 2013-07-24 → 2013-07-25 A (+1d) | 2013-07-24 → 2013-07-25 A (+1d) |  | 0% → 100% | 0d → none |  |  |
| 61 | **Sprint 6** | 2013-07-25 → 2013-07-26 A (+1d) | 2013-07-31 → 2013-08-01 A (+1d) |  | 0% → 100% | 0d → none |  |  |
| 62 | Sprint Plan | 2013-07-25 → 2013-07-26 A (+1d) | 2013-07-25 → 2013-07-26 A (+1d) |  | 0% → 100% | 0d → none |  |  |
| 63 | Post Live Bug Fixing | 2013-07-25 → 2013-07-26 A (+1d) | 2013-07-31 → 2013-08-01 A (+1d) |  | 0% → 100% | 0d → none |  |  |
| 64 | Release Sprint | 2013-07-31 → 2013-08-01 A (+1d) | 2013-07-31 → 2013-08-01 A (+1d) |  | 0% → 100% | 0d → none |  |  |
| 65 | Sprint Review & Improve Process | 2013-07-31 → 2013-08-01 A (+1d) | 2013-07-31 → 2013-08-01 A (+1d) |  | 0% → 100% | 0d → none |  |  |
| 66 | CSP Production Account for Beta Customer | 2013-07-09 A | 2013-08-01 A |  | 0% → 100% | 89.5d → none |  |  |
| 67 | **On going Support & Maintenance** | 2013-08-01 → 2013-08-02 (+1d) |  | 90d → 89d |  |  |  |  |
| 68 | Website monitoring | 2013-08-01 → 2013-08-02 (+1d) |  | 90d → 89d |  |  |  |  |
| 69 | Cloud Hosting Costs | 2013-08-01 → 2013-08-02 (+1d) |  | 90d → 89d |  |  |  |  |
| 70 | Bug fixing | 2013-08-01 → 2013-08-02 (+1d) |  | 90d → 89d |  |  |  |  |

| ID | Task | Start | Duration |
| --- | --- | --- | --- |
| 71 | iOS Bug Fixing & Releases | 2013-08-01 → 2013-08-02 (+1d) | 90d → 89d |
